# AgenciaDigital

Schedule from ProjectLibre, 2027-01-04 to 2027-11-12.

## Calendars

- Estandar: Mon-Fri 08:00-12:00, 13:00-17:00; Sat-Sun off.

## Resources

| Resource |
| --- |
| No Asignado |
| Project Manager |
| Project Sponsor |
| Operations Manager |
| Legal & Finance Lead |
| HR Manager |
| Delivery Lead |
| Technology Lead |
| Quality Lead |
| Commercial & Marketing Lead |
| DevOps Engineer |
| QA Engineer |
| Marketing Specialist |
| Web Developer |
| Pilot Project Manager 1 |
| Pilot Project Manager 2 |
| Pilot Project Manager 3 |

## Schedule

| ID | WBS | Task | Duration | Start | Finish | Predecessors | Resources |
| --- | --- | --- | --- | --- | --- | --- | --- |
| 1 | 1 | **Dirección y gestión del proyecto** | 35d? | 2027-01-04 | 2027-02-19 |  |  |
| 2 | 1.1 | Formalización del inicio del proyecto | 5d? | 2027-01-04 | 2027-01-08 |  | Project Manager |
| 3 | 1.2 | Identificación y análisis de stakeholders | 10d? | 2027-01-11 | 2027-01-22 | 2 | Project Manager |
| 4 | 1.3 | Elaboración del plan de dirección del proyecto | 15d? | 2027-01-25 | 2027-02-12 | 3 | Project Manager |
| 5 | 1.4 | Aprobación del plan de dirección | 5d? | 2027-02-15 | 2027-02-19 | 4 | Project Manager |
| 6 | 1.5 | Seguimiento y control integrado | 1d? | 2027-01-04 | 2027-01-04 |  | Project Manager |
| 7 | 1.6 | Gestión de cambios y riesgos | 1d? | 2027-01-04 | 2027-01-04 |  | Project Manager |
| 8 | 2 | **Modelo operativo y planificación de la implantación** | 55d? | 2027-02-22 | 2027-05-07 |  |  |
| 9 | 2.1 | Análisis del modelo de negocio y requisitos operativos | 10d? | 2027-02-22 | 2027-03-05 | 5 | Operations Manager |
| 10 | 2.2 | Definición de la estructura organizativa | 10d? | 2027-03-08 | 2027-03-19 | 9 | Operations Manager |
| 11 | 2.3 | Diseño del modelo operativo | 15d? | 2027-03-22 | 2027-04-09 | 10 | Operations Manager |
| 12 | 2.4 | Elaboración del plan de implantación | 15d? | 2027-04-12 | 2027-04-30 | 11 | Project Manager |
| 13 | 2.5 | Validación y aprobación del modelo operativo | 5d? | 2027-05-03 | 2027-05-07 | 12 | Project Sponsor |
| 14 | 3 | **Constitución legal, administrativa y financiera** | 75d? | 2027-01-11 | 2027-04-23 |  |  |
| 15 | 3.1 | Definición de la forma jurídica y estructura societaria | 10d? | 2027-01-11 | 2027-01-22 | 2 | Legal & Finance Lead |
| 16 | 3.2 | Preparación de la documentación de constitución | 10d? | 2027-01-25 | 2027-02-05 | 15 | Legal & Finance Lead |
| 17 | 3.3 | Formalización notarial e inscripción registral | 20d? | 2027-02-08 | 2027-03-05 | 16 | Legal & Finance Lead |
| 18 | 3.4 | Altas fiscales, laborales y administrativas | 10d? | 2027-03-08 | 2027-03-19 | 17 | Legal & Finance Lead |
| 19 | 3.5 | Apertura de cuentas y configuración financiera | 10d? | 2027-03-22 | 2027-04-02 | 18 | Legal & Finance Lead |
| 20 | 3.6 | Preparación de contratos y procedimientos administrativos | 15d? | 2027-04-05 | 2027-04-23 | 19 | Legal & Finance Lead |
| 21 | 4 | **Organización y equipo** | 85d? | 2027-03-22 | 2027-07-16 |  |  |
| 22 | 4.1 | Definición de perfiles, roles y responsabilidades | 10d? | 2027-03-22 | 2027-04-02 | 10 | HR Manager |
| 23 | 4.2 | Elaboración del plan de contratación | 10d? | 2027-04-05 | 2027-04-16 | 22 | HR Manager |
| 24 | 4.3 | Selección y contratación del equipo inicial | 30d? | 2027-04-19 | 2027-05-28 | 18, 23 | HR Manager |
| 25 | 4.4 | Incorporación y onboarding del personal | 15d? | 2027-05-31 | 2027-06-18 | 24 | HR Manager |
| 26 | 4.5 | Formación en procesos, herramientas y metodologías | 15d? | 2027-06-21 | 2027-07-09 | 25 | HR Manager |
| 27 | 4.6 | Validación de la preparación operativa del equipo | 5d? | 2027-07-12 | 2027-07-16 | 26 | Operations Manager |

| ID | WBS | Task | Duration | Start | Finish | Predecessors | Resources |
| --- | --- | --- | --- | --- | --- | --- | --- |
| 28 | 5 | **Catálogo de servicios y modelo de delivery** | 80d? | 2027-05-10 | 2027-08-27 |  |  |
| 29 | 5.1 | Definición de las cinco líneas de servicio | 15d? | 2027-05-10 | 2027-05-28 | 13 | Delivery Lead |
| 30 | 5.2 | Diseño del catálogo de servicios y entregables | 15d? | 2027-05-31 | 2027-06-18 | 29 | Delivery Lead |
| 31 | 5.3 | Definición del modelo de estimación y presupuestación | 10d? | 2027-06-21 | 2027-07-02 | 30 | Delivery Lead |
| 32 | 5.4 | Diseño del modelo de delivery y gestión de proyectos | 20d? | 2027-07-05 | 2027-07-30 | 31 | Delivery Lead |
| 33 | 5.5 | Elaboración de plantillas y estándares de entrega | 15d? | 2027-08-02 | 2027-08-20 | 32 | Delivery Lead |
| 34 | 5.6 | Validación y aprobación del catálogo y modelo de delivery | 5d? | 2027-08-23 | 2027-08-27 | 33 | Operations Manager |
| 35 | 6 | **Plataforma tecnológica** | 110d? | 2027-04-12 | 2027-09-10 |  |  |
| 36 | 6.1 | Definición de requisitos tecnológicos y arquitectura de referencia | 15d? | 2027-04-12 | 2027-04-30 | 11 | Technology Lead |
| 37 | 6.2 | Selección de proveedores cloud y herramientas tecnológicas | 10d? | 2027-05-03 | 2027-05-14 | 36 | Technology Lead |
| 38 | 6.3 | Configuración de infraestructura cloud y entornos de trabajo | 20d? | 2027-05-17 | 2027-06-11 | 37 | DevOps Engineer |
| 39 | 6.4 | Implantación de repositorios y pipelines CI/CD | 15d? | 2027-06-14 | 2027-07-02 | 38 | DevOps Engineer |
| 40 | 6.5 | Configuración de herramientas de gestión y documentación | 10d? | 2027-07-05 | 2027-07-16 | 39 | Technology Lead |
| 41 | 6.6 | Implantación de herramientas de testing y control de calidad | 15d? | 2027-07-19 | 2027-08-06 | 40 | QA Engineer |
| 42 | 6.7 | Configuración de monitorización, seguridad y copias de seguridad | 15d? | 2027-08-09 | 2027-08-27 | 41 | DevOps Engineer |
| 43 | 6.8 | Pruebas de integración y validación de la plataforma tecnológica | 10d? | 2027-08-30 | 2027-09-10 | 42 | Technology Lead |
| 44 | 7 | **Definición del modelo de gobierno y responsabilidades** | 150d? | 2027-01-04 | 2027-07-30 |  |  |
| 45 | 7.1 | Diseño de procesos de gestión de proyectos | 10d? | 2027-01-04 | 2027-01-15 |  | Project Manager |
| 46 | 7.2 | Definición de estándares de calidad y criterios de aceptación | 15d? | 2027-04-12 | 2027-04-30 | 11 | Project Manager |
| 47 | 7.3 | Diseño de procesos de gestión de riesgos y cambios | 15d? | 2027-05-03 | 2027-05-21 | 46 | Quality Lead |
| 48 | 7.4 | Definición de políticas de seguridad y protección de datos | 10d? | 2027-05-24 | 2027-06-04 | 47 | Project Manager |
| 49 | 7.5 | Implantación de procesos de documentación y gestión del conocimiento | 15d? | 2027-06-07 | 2027-06-25 | 48 | Technology Lead |
| 50 | 7.6 | Configuración de indicadores KPI y mecanismos de seguimiento | 15d? | 2027-06-28 | 2027-07-16 | 49 | Quality Lead |
| 51 | 7.7 | Validación y aprobación del sistema de procesos y gobierno | 10d? | 2027-07-19 | 2027-07-30 | 50 | Quality Lead |

| ID | WBS | Task | Duration | Start | Finish | Predecessors | Resources |
| --- | --- | --- | --- | --- | --- | --- | --- |
| 52 | 8 | **Capacidades comerciales y de marketing** | 110d? | 2027-01-04 | 2027-06-04 |  |  |
| 53 | 8.1 | Definición de la estrategia comercial y posicionamiento de mercado | 15d? | 2027-01-04 | 2027-01-22 |  | Commercial & Marketing Lead |
| 54 | 8.2 | Desarrollo de la identidad corporativa y materiales de marca | 15d? | 2027-01-25 | 2027-02-12 | 53 | Marketing Specialist |
| 55 | 8.3 | Diseño y desarrollo del sitio web corporativo | 20d? | 2027-02-15 | 2027-03-12 | 54 | Web Developer |
| 56 | 8.4 | Selección y configuración del sistema CRM | 15d? | 2027-03-15 | 2027-04-02 | 55 | Commercial & Marketing Lead |
| 57 | 8.5 | Elaboración de propuestas comerciales y materiales de ventas | 15d? | 2027-04-05 | 2027-04-23 | 56 | Commercial & Marketing Lead |
| 58 | 8.6 | Definición de procesos comerciales y gestión de clientes | 15d? | 2027-04-26 | 2027-05-14 | 57 | Commercial & Marketing Lead |
| 59 | 8.7 | Preparación de canales digitales y herramientas de marketing | 10d? | 2027-05-17 | 2027-05-28 | 58 | Commercial & Marketing Lead |
| 60 | 8.8 | Validación y aprobación de las capacidades comerciales | 5d? | 2027-05-31 | 2027-06-04 | 59 | Marketing Specialist |
| 61 | 9 | **Proyectos piloto** | 120d? | 2027-01-04 | 2027-06-18 |  |  |
| 62 | 9.1 | Confirmación del alcance y requisitos de los tres proyectos piloto | 10d? | 2027-01-04 | 2027-01-15 |  | Delivery Lead |
| 63 | 9.2 | Planificación detallada de los proyectos piloto | 15d? | 2027-01-18 | 2027-02-05 | 62 | Delivery Lead |
| 64 | 9.3 | Preparación de equipos y entornos de ejecución | 10d? | 2027-02-08 | 2027-02-19 | 63 | Technology Lead |
| 65 | 9.4 | Ejecución del proyecto piloto 1 | 60d? | 2027-02-22 | 2027-05-14 | 64 | Pilot Project Manager 1 |
| 66 | 9.5 | Ejecución del proyecto piloto 2 | 60d? | 2027-02-22 | 2027-05-14 | 64 | Pilot Project Manager 2 |
| 67 | 9.6 | Ejecución del proyecto piloto 3 | 60d? | 2027-02-22 | 2027-05-14 | 64 | Pilot Project Manager 3 |
| 68 | 9.7 | Evaluación de resultados y recopilación de indicadores KPI | 15d? | 2027-05-17 | 2027-06-04 | 65, 66, 67 | Quality Lead |
| 69 | 9.8 | Validación y aceptación formal de los tres proyectos piloto | 10d? | 2027-06-07 | 2027-06-18 | 68 | Delivery Lead |
| 70 | 10 | **Validación y transición a operaciones** | 65d? | 2027-06-21 | 2027-09-17 |  |  |
| 71 | 10.1 | Evaluación integral de los resultados del proyecto | 10d? | 2027-06-21 | 2027-07-02 | 69 | Project Manager |
| 72 | 10.2 | Verificación del cumplimiento de los objetivos y criterios de aceptación | 10d? | 2027-07-05 | 2027-07-16 | 71 | Quality Lead |
| 73 | 10.3 | Preparación de la documentación de transición a operaciones | 15d? | 2027-07-19 | 2027-08-06 | 72 | Operations Manager |
| 74 | 10.4 | Transferencia de conocimientos y responsabilidades al equipo operativo | 15d? | 2027-08-09 | 2027-08-27 | 73 | Operations Manager |
| 75 | 10.5 | Validación de la preparación operativa de la agencia | 10d? | 2027-08-30 | 2027-09-10 | 74 | Operations Manager |
| 76 | 10.6 | Aprobación formal de la transición a operaciones | 5d? | 2027-09-13 | 2027-09-17 | 75 | Project Sponsor |

| ID | WBS | Task | Duration | Start | Finish | Predecessors | Resources |
| --- | --- | --- | --- | --- | --- | --- | --- |
| 77 | 11 | **Cierre del proyecto** | 40d? | 2027-09-20 | 2027-11-12 |  |  |
| 78 | 11.1 | Verificación final de entregables y compromisos contractuales | 5d? | 2027-09-20 | 2027-09-24 | 76 | Project Manager |
| 79 | 11.2 | Evaluación final del presupuesto, cronograma y desempeño | 5d? | 2027-09-27 | 2027-10-01 | 78 | Project Manager |
| 80 | 11.3 | Elaboración del informe final del proyecto | 10d? | 2027-10-04 | 2027-10-15 | 79 | Project Manager |
| 81 | 11.4 | Documentación de lecciones aprendidas y recomendaciones | 5d? | 2027-10-18 | 2027-10-22 | 80 | Project Manager |
| 82 | 11.5 | Cierre administrativo, financiero y contractual | 10d? | 2027-10-25 | 2027-11-05 | 81 | Legal & Finance Lead |
| 83 | 11.6 | Presentación y aprobación del acta de cierre del proyecto | 5d? | 2027-11-08 | 2027-11-12 | 82 | Project Sponsor |
